Schedule from MS Project, 2009-10-12 to 2017-06-08, status date 2017-04-13, costs in €, A marks actual dates.

## Calendars

- Standard: Mon-Fri 08:40-16:40; Sat-Sun off. Exceptions (off unless hours are given): 2017-04-14 (Goede vrijdag), 2017-04-17 (2e Paasdag), 2017-05-27 to 2017-05-28 08:00-12:00, 13:00-17:00.

## Resources

| Resource | Rate |
| --- | --- |
| Patrick van Batenburg | 40 |
| Steven Logghe | 40 |

## Schedule

| ID | WBS | Task | Duration | Start | Finish | Predecessors | Complete | Constraint | Resources | Work | Actual work | Cost | Actual cost |
| --- | --- | --- | --- | --- | --- | --- | --- | --- | --- | --- | --- | --- | --- |
| 1 | 1 | **KT1** | 11.12d | 2017-04-18 08:30 A | 2017-05-03 09:40 A |  | 100% |  |  | 7.72h | 7.72h | 308.67 | 308.67 |
| 2 | 1.1 | **Uitgewerkt interview met opdrachtgever: interviewvragen en gespreksverslag** | 2.04d | 2017-04-18 08:30 A | 2017-04-20 09:00 A |  | 100% |  |  | 0.92h | 0.92h | 36.67 | 36.67 |
| 3 | 1.1.1 | Interviewvragen opstellen | 20min | 2017-04-18 08:30 A | 2017-04-18 09:00 A |  | 100% | finish no earlier than 2017-04-17 16:30 | Patrick van Batenburg | 0.33h | 0.33h | 13.33 | 13.33 |
| 4 | 1.1.2 | Interview houden met opdrachtgever | 15min | 2017-04-18 16:15 A | 2017-04-18 16:30 A | 3 | 100% | finish no earlier than 2017-04-18 16:30 | Steven Logghe | 0.25h | 0.25h | 10 | 10 |
| 5 | 1.1.3 | Gespreksverslag van het interview geaccordeerd door de opdrachtgever | 20min | 2017-04-20 08:30 A | 2017-04-20 09:00 A | 4 | 100% | finish no earlier than 2017-04-18 16:30 | Patrick van Batenburg | 0.33h | 0.33h | 13.33 | 13.33 |
| 6 | 1.2 | **De hernieuwde opdracht komt overeen met de resultaten van het interview** | 0.03d | 2017-04-21 08:30 A | 2017-04-21 08:55 A | 4 | 100% |  |  | 0.58h | 0.58h | 23.33 | 23.33 |
| 7 | 1.2.1 | De MoSCoW is ingevuld | 10min | 2017-04-21 08:30 A | 2017-04-21 08:50 A |  | 100% | start no earlier than 2017-04-18 08:30 | Patrick van Batenburg | 0.17h | 0.17h | 6.67 | 6.67 |
| 8 | 1.2.2 | Grafische eisen verwerkt | 5min | 2017-04-21 08:30 A | 2017-04-21 08:45 A | 7 | 100% | start no earlier than 2017-04-21 08:30 | Patrick van Batenburg | 0.08h | 0.08h | 3.33 | 3.33 |
| 9 | 1.2.3 | Functionele eisen verwerkt | 5min | 2017-04-21 08:30 A | 2017-04-21 08:45 A | 7 | 100% | start no earlier than 2017-04-21 08:40 | Patrick van Batenburg | 0.08h | 0.08h | 3.33 | 3.33 |
| 10 | 1.2.4 | Technische eisen verwerkt | 5min | 2017-04-21 08:30 A | 2017-04-21 08:45 A | 7 | 100% | start no earlier than 2017-04-21 08:40 | Patrick van Batenburg | 0.08h | 0.08h | 3.33 | 3.33 |
| 11 | 1.2.5 | Projecteisen verwerkt | 5min | 2017-04-21 08:30 A | 2017-04-21 08:45 A | 7 | 100% | start no earlier than 2017-04-21 08:40 | Patrick van Batenburg | 0.08h | 0.08h | 3.33 | 3.33 |
| 12 | 1.2.6 | Geaccordeerd door de opdrachtgever | 5min | 2017-04-21 08:50 A | 2017-04-21 08:55 A | 7 | 100% | start no earlier than 2017-04-18 16:30 | Steven Logghe | 0.08h | 0.08h | 3.33 | 3.33 |
| 13 | 1.3 | Offerte | 20min | 2017-04-18 16:30 A | 2017-04-19 08:50 A | 4 | 100% | finish no earlier than 2017-04-18 16:30 | Patrick van Batenburg | 0.33h | 0.33h | 13.33 | 13.33 |
| 14 | 1.4 | **Prototype (wireframes) gebaseerd op Interview** | 0.08d | 2017-04-19 08:50 A | 2017-04-19 09:30 A | 13 | 100% |  | Steven Logghe | 0.67h | 0.67h | 26.67 | 26.67 |
| 15 | 1.4.1 | Tekeningen waarin de volledige werking van de applicatie/media-uiting wordt uitgelegd | 20min | 2017-04-19 08:50 A | 2017-04-19 09:10 A |  | 100% | start no earlier than 2017-04-17 08:00 |  |  |  |  |  |
| 16 | 1.4.2 | De volgorde van de verschillende schermen is aangegeven | 10min | 2017-04-19 09:10 A | 2017-04-19 09:20 A | 15 | 100% | start no earlier than 2017-04-17 08:00 |  |  |  |  |  |
| 17 | 1.4.3 | De prototypes zijn besproken en geaccordeerd | 10min | 2017-04-19 09:20 A | 2017-04-19 09:30 A | 16 | 100% | start no earlier than 2017-04-17 08:00 |  |  |  |  |  |
| 18 | 1.5 | Plan van Aanpak | 30min | 2017-04-18 08:30 A | 2017-04-18 09:10 A |  | 100% | start no earlier than 2017-04-17 08:00 | Patrick van Batenburg | 0.5h | 0.5h | 20 | 20 |
| 19 | 1.6 | Globale planning voor het gehele project | 20min | 2017-04-18 08:40 A | 2017-04-18 09:00 A |  | 100% | start no earlier than 2017-04-17 08:00 | Patrick van Batenburg | 0.33h | 0.33h | 13.33 | 13.33 |
| 20 | 1.7 | **Ontwerpdocument – Functioneel ontwerp** | 0.93d | 2017-04-19 09:30 A | 2017-04-20 08:58 A | 19 | 100% |  |  | 0.25h | 0.25h | 10 | 10 |
| 21 | 1.7.1 | Bevat de prototypes | 5min | 2017-04-19 09:30 A | 2017-04-19 09:35 A | 14 | 100% | start no earlier than 2017-04-17 08:00 | Steven Logghe | 0.08h | 0.08h | 3.33 | 3.33 |
| 22 | 1.7.2 | Bevat Use Case Diagram | 5min | 2017-04-20 08:53 A | 2017-04-20 08:58 A | 24 | 100% | start no earlier than 2017-04-17 08:00 | Patrick van Batenburg | 0.08h | 0.08h | 3.33 | 3.33 |
| 23 | 1.7.3 | Bevat de Use Case Templates | 5min | 2017-04-20 08:50 A | 2017-04-20 08:55 A | 28 | 100% | start no earlier than 2017-04-17 08:00 | Patrick van Batenburg | 0.08h | 0.08h | 3.33 | 3.33 |
| 24 | 1.8 | **Use Case Diagram** | 0.03d | 2017-04-20 08:40 A | 2017-04-20 08:53 A | 19 | 100% |  | Steven Logghe | 0.22h | 0.22h | 8.67 | 8.67 |
| 25 | 1.8.1 | Plaats een titel boven het te maken diagram | 1min | 2017-04-20 08:40 A | 2017-04-20 08:41 A |  | 100% | start no earlier than 2017-04-20 08:30 |  |  |  |  |  |
| 26 | 1.8.2 | Selecteer actoren en Use Cases | 2min | 2017-04-20 08:41 A | 2017-04-20 08:43 A | 25 | 100% | start no earlier than 2017-04-17 08:00 |  |  |  |  |  |
| 27 | 1.8.3 | Bepaal per Use Case welke actor(en) verantwoordelijk zijn | 10min | 2017-04-20 08:43 A | 2017-04-20 08:53 A | 26 | 100% | start no earlier than 2017-04-17 08:00 |  |  |  |  |  |

| ID | WBS | Task | Type | Duration | Start | Finish | Predecessors | Complete | Constraint | Resources | Work | Actual work | Cost | Actual cost |
| --- | --- | --- | --- | --- | --- | --- | --- | --- | --- | --- | --- | --- | --- | --- |
| 28 | 1.9 | **Use Case Templates** |  | 0.02d | 2017-04-20 08:30 A | 2017-04-20 08:50 A | 19 | 100% |  | Steven Logghe | 0.33h | 0.33h | 13.33 | 13.33 |
| 29 | 1.9.1 | Plaats een titel boven elk te maken template |  | 2min | 2017-04-20 08:30 A | 2017-04-20 08:42 A |  | 100% | start no earlier than 2017-04-17 08:00 |  |  |  |  |  |
| 30 | 1.9.2 | Selecteer actoren |  | 5min | 2017-04-20 08:30 A | 2017-04-20 08:45 A | 29 | 100% | start no earlier than 2017-04-17 08:00 |  |  |  |  |  |
| 31 | 1.9.3 | De Use Case templates maken doormiddel van het Use Case diagram |  | 10min | 2017-04-20 08:30 A | 2017-04-20 08:50 A | 30 | 100% | start no earlier than 2017-04-17 08:00 |  |  |  |  |  |
| 32 | 1.10 | Prototype toelichting volgordelijkheid |  | 10min | 2017-04-18 09:00 A | 2017-04-18 09:10 A | 19 | 100% | start no earlier than 2017-04-17 08:00 | Steven Logghe | 0.17h | 0.17h | 6.67 | 6.67 |
| 33 | 1.11 | **Ontwerpdocument – Technisch ontwerp** |  | 0.06d | 2017-05-02 08:40 A | 2017-05-02 09:10 A | 19 | 100% |  | Patrick van Batenburg | 0.5h | 0.5h | 20 | 20 |
| 34 | 1.11.1 | Bevat Het Modeldictonary document |  | 5min | 2017-05-02 08:40 A | 2017-05-02 08:45 A | 38 | 100% | start no earlier than 2017-05-02 08:30 |  |  |  |  |  |
| 35 | 1.11.2 | Bevat Het Klassendiagram document |  | 5min | 2017-05-02 08:40 A | 2017-05-02 08:45 A | 39 | 100% | start no earlier than 2017-05-02 08:40 |  |  |  |  |  |
| 36 | 1.11.3 | Bevat Het Datadictonary document |  | 5min | 2017-05-02 08:40 A | 2017-05-02 08:45 A | 40 | 100% | start no earlier than 2017-05-02 08:40 |  |  |  |  |  |
| 37 | 1.11.4 | Bevat Het Sequentiediagram document |  | 5min | 2017-05-02 09:05 A | 2017-05-02 09:10 A | 41 | 100% | start no earlier than 2017-05-02 08:40 |  |  |  |  |  |
| 38 | 1.12 | Modeldictionary |  | 10min | 2017-04-28 08:30 A | 2017-04-28 08:50 A | 19 | 100% | start no earlier than 2017-04-17 08:00 | Patrick van Batenburg | 0.17h | 0.17h | 6.67 | 6.67 |
| 39 | 1.13 | Klassendiagram |  | 20min | 2017-05-01 08:30 A | 2017-05-01 09:00 A | 19 | 100% | start no earlier than 2017-04-17 08:00 | Patrick van Batenburg | 0.33h | 0.33h | 13.33 | 13.33 |
| 40 | 1.14 | Datadictionary |  | 10min | 2017-04-18 09:00 A | 2017-04-18 09:10 A | 19 | 100% | start no earlier than 2017-04-17 08:00 | Patrick van Batenburg | 0.17h | 0.17h | 6.67 | 6.67 |
| 41 | 1.15 | **Sequentiediagrammen** |  | 0.05d | 2017-05-02 08:40 A | 2017-05-02 09:05 A | 19 | 100% |  | Patrick van Batenburg | 0.42h | 0.42h | 16.67 | 16.67 |
| 42 | 1.15.1 | Plaats een titel boven het te maken diagram |  | 5min | 2017-05-02 08:40 A | 2017-05-02 08:45 A |  | 100% | start no earlier than 2017-05-02 08:30 |  |  |  |  |  |
| 43 | 1.15.2 | Selecteer de operaties |  | 10min | 2017-05-02 08:45 A | 2017-05-02 08:55 A | 42 | 100% | start no earlier than 2017-05-02 08:40 |  |  |  |  |  |
| 44 | 1.15.3 | Vind de activiteiten en de bijbehorende flow of control |  | 10min | 2017-05-02 08:55 A | 2017-05-02 09:05 A | 43 | 100% | start no earlier than 2017-05-02 08:40 |  |  |  |  |  |
| 45 | 1.15.4 | Bepaal per activiteit welk object verantwoordelijk is |  | 10min | 2017-05-02 08:40 A | 2017-05-02 08:50 A |  | 100% | start no earlier than 2017-05-02 08:40 |  |  |  |  |  |
| 46 | 1.16 | Taakverdeling Ontwikkelomgeving |  | 10min | 2017-05-03 08:40 A | 2017-05-03 08:50 A | 20, 33 | 100% | start no earlier than 2017-05-03 08:30 | Patrick van Batenburg | 0.17h | 0.17h | 6.67 | 6.67 |
| 47 | 1.17 | **Materialenlijst: Hard- en software van de ontwikkelomgeving** |  | 0.02d | 2017-04-19 09:45 A | 2017-04-19 09:55 A | 46 | 100% |  | Steven Logghe | 0.17h | 0.17h | 6.67 | 6.67 |
| 48 | 1.17.1 | Een volledige lijst met versienummers van de hardware gebruikt voor het ontwikkelen |  | 10min | 2017-04-19 09:45 A | 2017-04-19 09:55 A |  | 100% | start no earlier than 2017-04-17 08:00 |  |  |  |  |  |
| 49 | 1.17.2 | Een volledige lijst met versienummers van de software gebruikt voor het ontwikkelen |  | 10min | 2017-04-19 09:45 A | 2017-04-19 09:55 A |  | 100% | start no earlier than 2017-04-17 08:00 |  |  |  |  |  |
| 50 | 1.18 | Back-up procedure |  | 60min | 2017-05-03 08:30 A | 2017-05-03 09:40 A | 47 | 100% | start no earlier than 2017-04-17 08:00 | Steven Logghe | 1h | 1h | 40 | 40 |
| 51 | 1.19 | Verslag over de installatie, configuratie en testen van de testomgeving |  | 30min | 2017-05-02 08:40 A | 2017-05-02 09:10 A |  | 100% | start no earlier than 2017-05-02 08:30 | Patrick van Batenburg | 0.5h | 0.5h | 20 | 20 |
| 52 | 2 | Eind KT1 | milestone | 0d | 2017-05-04 08:30 A | 2017-05-04 08:30 A |  | 100% | start no earlier than 2017-05-04 08:30 |  |  |  |  |  |

| ID | WBS | Task | Duration | Start | Finish | Predecessors | Complete | Remaining | Total slack | Free slack | Constraint | Resources | Work | Actual work | Cost | Actual cost |
| --- | --- | --- | --- | --- | --- | --- | --- | --- | --- | --- | --- | --- | --- | --- | --- | --- |
| 53 | 3 | **KT2** | 21.94d? | 2017-05-04 08:40 A | 2017-05-31 16:10 | 1 | 64% | 7.89d? | 0d |  |  |  | 300.5h | 300.5h | 12,020 | 12,020 |
| 54 | 3.1 | Organisatieonderzoek over reeds gebruikte databases binnen het bedrijf, die gebruikt kunnen worden voor de nieuwe applicatie | 60min | 2017-05-04 08:40 A | 2017-05-04 09:40 A |  | 100% |  |  |  | start no earlier than 2017-05-04 08:30 | Patrick van Batenburg | 1h | 1h | 40 | 40 |
| 55 | 3.2 | Het genormaliseerde databaseontwerp | 40min | 2017-05-05 08:40 A | 2017-05-05 09:20 A | 54 | 100% |  |  |  |  | Patrick van Batenburg | 0.67h | 0.67h | 26.67 | 26.67 |
| 56 | 3.3 | Bijgewerkte datadictionary | 10min | 2017-05-08 08:40 A | 2017-05-08 08:50 A | 55 | 100% |  |  |  |  | Patrick van Batenburg | 0.17h | 0.17h | 6.67 | 6.67 |
| 57 | 3.4 | Een procedure voor het aanleveren van databasegegevens door gebruikers | 20min | 2017-05-04 09:40 A | 2017-05-04 10:00 A | 54 | 100% |  |  |  |  | Steven Logghe | 0.33h | 0.33h | 13.33 | 13.33 |
| 58 | 3.5 | Taakverdeling voor het realiseren van een applicatie | 10min | 2017-05-09 08:40 A | 2017-05-09 08:50 A | 52 | 100% |  |  |  | start no earlier than 2017-05-09 08:30 | Patrick van Batenburg | 0.17h | 0.17h | 6.67 | 6.67 |
| 59 | 3.6 | **Materialen- en middelenlijst voor het realiseren van de applicatie** | 0.04d | 2017-05-09 08:30 A | 2017-05-09 09:00 A | 54 | 100% |  |  |  |  | Steven Logghe | 0.33h | 0.33h | 13.33 | 13.33 |
| 60 | 3.6.1 | Een volledige lijst met versienummers van de hardware gebruikt voor het realiseren | 10min | 2017-05-09 08:30 A | 2017-05-09 08:50 A |  | 100% |  |  |  |  |  |  |  |  |  |
| 61 | 3.6.2 | Een volledige lijst met versienummers van de software gebruikt voor het realiseren | 20min | 2017-05-09 08:30 A | 2017-05-09 09:00 A |  | 100% |  |  |  |  |  |  |  |  |  |
| 62 | 3.7 | **Klassendiagram vanuit Visual Studio** | 2d? | 2017-05-28 16:30 | 2017-05-30 16:10 | 65 |  |  | 1d |  |  |  |  |  |  |  |
| 63 | 3.7.1 | Klassendiagram vanuit Visual Studio | 1d? | 2017-05-28 16:30 | 2017-05-29 16:10 |  |  |  | 1d | 0d |  |  |  |  |  |  |
| 64 | 3.7.2 | Hier het verschil tussen beschrijven in technisch ontwerp | 1d? | 2017-05-29 16:10 | 2017-05-30 16:10 | 63 |  |  | 1d |  |  |  |  |  |  |  |
| 65 | 3.8 | **Werkende solution(v1.0.0) die is getoond aan opdrachtgever** | 15.94d? | 2017-05-09 08:30 A | 2017-05-28 16:30 | 59 | 93% | 1.08d? | 0d |  |  |  | 297.83h | 297.83h | 11,913.33 | 11,913.33 |
| 66 | 3.8.1 | **Klassen** | 15.94d? | 2017-05-09 08:30 A | 2017-05-28 16:30 |  | 92% | 1.2d? | 0d |  |  |  | 59.5h | 59.5h | 2,380 | 2,380 |
| 67 | 3.8.1.1 | **Models** | 0.06d | 2017-05-09 09:00 A | 2017-05-09 09:30 A |  | 100% |  |  |  |  | Patrick van Batenburg | 0.5h | 0.5h | 20 | 20 |
| 68 | 3.8.1.1.1 | ModelBase | 10min | 2017-05-09 09:00 A | 2017-05-09 09:10 A |  | 100% |  |  |  |  |  |  |  |  |  |
| 69 | 3.8.1.1.2 | User Gemaakt | 30min | 2017-05-09 09:00 A | 2017-05-09 09:30 A | 68 | 100% |  |  |  |  |  |  |  |  |  |
| 70 | 3.8.1.1.3 | Task Gemaakt | 0.06d | 2017-05-09 09:00 A | 2017-05-09 09:30 A | 68 | 100% |  |  |  |  |  |  |  |  |  |
| 71 | 3.8.1.1.4 | Grade Gemaakt | 0.06d | 2017-05-09 09:00 A | 2017-05-09 09:30 A | 68 | 100% |  |  |  |  |  |  |  |  |  |
| 72 | 3.8.1.1.5 | Schedule Gemaakt | 0.06d | 2017-05-09 09:00 A | 2017-05-09 09:30 A | 68 | 100% |  |  |  |  |  |  |  |  |  |
| 73 | 3.8.1.1.6 | Appointment Gemaakt | 0.06d | 2017-05-09 09:00 A | 2017-05-09 09:30 A | 68 | 100% |  |  |  |  |  |  |  |  |  |
| 74 | 3.8.1.2 | **Controllers** | 0.12d | 2017-05-09 09:00 A | 2017-05-09 10:00 A | 67 | 100% |  |  |  |  | Patrick van Batenburg | 1h | 1h | 40 | 40 |
| 75 | 3.8.1.2.1 | ControllerBase gemaakt | 10min | 2017-05-09 09:00 A | 2017-05-09 09:10 A |  | 100% |  |  |  |  |  |  |  |  |  |
| 76 | 3.8.1.2.2 | UserController met CRUD functionaliteit | 1h | 2017-05-09 09:00 A | 2017-05-09 10:00 A | 75 | 100% |  |  |  |  |  |  |  |  |  |
| 77 | 3.8.1.2.3 | TaskController met CRUD functionaliteit | 0.12d | 2017-05-09 09:00 A | 2017-05-09 10:00 A | 75 | 100% |  |  |  |  |  |  |  |  |  |
| 78 | 3.8.1.2.4 | GradeController met CRUD functionaliteit | 0.12d | 2017-05-09 09:00 A | 2017-05-09 10:00 A | 75 | 100% |  |  |  |  |  |  |  |  |  |
| 79 | 3.8.1.2.5 | ScheduleController met CRUD functionaliteit | 0.12d | 2017-05-09 09:00 A | 2017-05-09 10:00 A | 75 | 100% |  |  |  |  |  |  |  |  |  |
| 80 | 3.8.1.2.6 | AppointmentController met CRUD functionaliteit | 0.12d | 2017-05-09 09:00 A | 2017-05-09 10:00 A | 75 | 100% |  |  |  |  |  |  |  |  |  |

| ID | WBS | Task | Duration | Start | Finish | Predecessors | Complete | Remaining | Total slack | Constraint | Resources | Work | Actual work | Cost | Actual cost |
| --- | --- | --- | --- | --- | --- | --- | --- | --- | --- | --- | --- | --- | --- | --- | --- |
| 81 | 3.8.1.3 | **Views** | 15.94d | 2017-05-09 08:30 A | 2017-05-28 16:30 |  | 91% | 1.49d | 0d |  |  | 58h | 58h | 2,320 | 2,320 |
| 82 | 3.8.1.3.1 | AddTask | 6h | 2017-05-09 08:30 A | 2017-05-09 14:40 A |  | 100% |  |  |  | Steven Logghe | 6h | 6h | 240 | 240 |
| 83 | 3.8.1.3.2 | EditSchedule view gemaakt | 2h | 2017-05-19 08:40 A | 2017-05-19 10:40 A |  | 100% |  |  | start no earlier than 2017-05-19 08:30 | Patrick van Batenburg | 2h | 2h | 80 | 80 |
| 84 | 3.8.1.3.3 | EditSubject view gemaakt | 2h | 2017-05-27 08:30 A | 2017-05-27 10:30 A |  | 100% |  |  | start no earlier than 2017-05-27 08:30 | Patrick van Batenburg | 2h | 2h | 80 | 80 |
| 85 | 3.8.1.3.4 | EditTask view gemaakt | 8h | 2017-05-25 16:30 A | 2017-05-26 16:30 A |  | 100% |  |  | finish no earlier than 2017-05-26 16:30 | Patrick van Batenburg | 8h | 8h | 320 | 320 |
| 86 | 3.8.1.3.5 | Login view gemaakt | 3h | 2017-05-09 09:00 A | 2017-05-09 12:00 A |  | 100% |  |  |  | Steven Logghe | 3h | 3h | 120 | 120 |
| 87 | 3.8.1.3.6 | Register view gemaakt | 3h | 2017-05-09 09:00 A | 2017-05-09 12:00 A |  | 100% |  |  |  | Steven Logghe | 3h | 3h | 120 | 120 |
| 88 | 3.8.1.3.7 | **Shedule** | 4d | 2017-05-24 16:10 A | 2017-05-28 16:30 |  | 85% | 0.6d | 0d |  |  | 34h | 34h | 1,360 | 1,360 |
| 89 | 3.8.1.3.7.1 | Grades view gemaakt | 6h | 2017-05-27 08:30 A | 2017-05-27 15:30 A |  | 100% |  |  |  | Patrick van Batenburg | 6h | 6h | 240 | 240 |
| 90 | 3.8.1.3.7.2 | Appointments view gemaakt | 6h | 2017-05-27 08:30 | 2017-05-27 15:30 |  |  |  | 1.12d | start no earlier than 2017-05-27 08:30 |  |  |  |  |  |
| 91 | 3.8.1.3.7.3 | Tasks view gemaakt | 28h | 2017-05-24 16:10 A | 2017-05-28 16:30 A |  | 100% |  |  | finish no earlier than 2017-05-28 16:30 | Patrick van Batenburg | 28h | 28h | 1,120 | 1,120 |
| 92 | 3.8.1.4 | EncryptionProvider gemaakt | 1d? | 2017-05-09 09:00 A | 2017-05-10 09:00 A |  | 100% |  |  |  |  |  |  |  |  |
| 93 | 3.8.2 | Gespreksverslag hiervan met mogelijke veranderingen | 1d? | 2017-05-09 09:00 | 2017-05-10 09:00 |  |  |  | 14.9d |  |  |  |  |  |  |
| 94 | 3.8.3 | Duidelijk commentaar in de solution | 14.9d? | 2017-05-09 09:00 A | 2017-05-27 16:30 A |  | 100% |  |  | finish no earlier than 2017-05-27 16:30 | Patrick van Batenburg; Steven Logghe | 238.33h | 238.33h | 9,533.33 | 9,533.33 |
| 95 | 3.9 | Gedetailleerd (technisch) testplan: integrale systeemtest | 1d? | 2017-05-28 16:30 | 2017-05-29 16:10 | 65 |  |  | 2d |  |  |  |  |  |  |
| 96 | 3.10 | Lijst van test-tools (code-checkers) | 1d? | 2017-05-28 16:30 | 2017-05-29 16:10 | 65 |  |  | 2d |  |  |  |  |  |  |
| 97 | 3.11 | **De test uitvoeren en de resultaten van de test documenteren** | 3d? | 2017-05-28 16:30 | 2017-05-31 16:10 | 65 |  |  | 0d |  |  |  |  |  |  |
| 98 | 3.11.1 | **Technische test** | 3d? | 2017-05-28 16:30 | 2017-05-31 16:10 |  |  |  | 0d |  |  |  |  |  |  |
| 99 | 3.11.1.1 | Maak een technische test | 1d? | 2017-05-28 16:30 | 2017-05-29 16:10 |  |  |  | 0d |  |  |  |  |  |  |
| 100 | 3.11.1.2 | De test laten uitvoeren door collega | 1d? | 2017-05-29 16:10 | 2017-05-30 16:10 | 99 |  |  | 0d |  |  |  |  |  |  |
| 101 | 3.11.1.3 | De resultaten van de test documenteren | 1d? | 2017-05-30 16:10 | 2017-05-31 16:10 | 100 |  |  | 0d |  |  |  |  |  |  |
| 102 | 3.11.2 | **Functionele test** | 3d? | 2017-05-28 16:30 | 2017-05-31 16:10 |  |  |  | 0d |  |  |  |  |  |  |
| 103 | 3.11.2.1 | Maak een functionele test | 1d? | 2017-05-28 16:30 | 2017-05-29 16:10 |  |  |  | 0d |  |  |  |  |  |  |
| 104 | 3.11.2.2 | De test laten uitvoeren door collega | 1d? | 2017-05-29 16:10 | 2017-05-30 16:10 | 103 |  |  | 0d |  |  |  |  |  |  |
| 105 | 3.11.2.3 | De resultaten van de test documenteren | 1d? | 2017-05-30 16:10 | 2017-05-31 16:10 | 104 |  |  | 0d |  |  |  |  |  |  |

| ID | WBS | Task | Type | Duration | Start | Finish | Predecessors | Total slack | Free slack |
| --- | --- | --- | --- | --- | --- | --- | --- | --- | --- |
| 106 | 3.12 | **Aanpassingen aan de applicatie** |  | 2d? | 2017-05-28 16:30 | 2017-05-30 16:10 | 65 | 1d |  |
| 107 | 3.12.1 | Aanpassingen aan de applicatie naar aanleiding van de testbevindingen |  | 1d? | 2017-05-28 16:30 | 2017-05-29 16:10 |  | 1d | 0d |
| 108 | 3.12.2 | Documentatie van de aanpassingen |  | 1d? | 2017-05-29 16:10 | 2017-05-30 16:10 | 107 | 1d |  |
| 109 | 4 | Eind KT2 | milestone | 0d | 2009-10-12 08:00 | 2009-10-12 08:00 |  | 1998.94d |  |
| 110 | 5 | **KT3** |  | 6d? | 2017-05-31 16:10 | 2017-06-08 16:10 | 53 | 0d |  |
| 111 | 5.1 | **Een implementatieplan (technische en organisatorisch), besproken met de opdrachtgever** |  | 3d? | 2017-05-31 16:10 | 2017-06-05 16:10 | 53 | 0d |  |
| 112 | 5.1.1 | Organisatorisch implementatieplan gemaakt |  | 1d? | 2017-05-31 16:10 | 2017-06-01 16:10 |  | 0d |  |
| 113 | 5.1.2 | Organisatorisch implementatieplan gemaakt |  | 1d? | 2017-06-01 16:10 | 2017-06-02 16:10 | 112 | 0d |  |
| 114 | 5.1.3 | Geaccordeerd door de opdrachtgever |  | 1d? | 2017-06-02 16:10 | 2017-06-05 16:10 | 113 | 0d |  |
| 115 | 5.2 | **Acceptatietest** |  | 3d? | 2017-05-31 16:10 | 2017-06-05 16:10 | 53 | 3d |  |
| 116 | 5.2.1 | Maak een acceptatietest voor de opdrachtgever en leg uit hoe deze uitgevoerd moet worden |  | 1d? | 2017-05-31 16:10 | 2017-06-01 16:10 |  | 3d | 0d |
| 117 | 5.2.2 | Acceptatietest uitgevoerd en ondertekend door opdrachtgever |  | 1d? | 2017-06-01 16:10 | 2017-06-02 16:10 | 116 | 3d | 0d |
| 118 | 5.2.3 | Verslag van de resultaten |  | 1d? | 2017-06-02 16:10 | 2017-06-05 16:10 | 117 | 3d |  |
| 119 | 5.3 | Documentatie van het implementeren van de applicatie in de productieomgeving. |  | 1d? | 2017-06-05 16:10 | 2017-06-06 16:10 | 111 | 2d |  |
| 120 | 5.4 | **Evaluatierapport van het implementatietraject, waarin de gegevens, zoals besproken met de opdrachtgever, zijn vastgelegd** |  | 3d? | 2017-06-05 16:10 | 2017-06-08 16:10 | 111 | 0d |  |
| 121 | 5.4.1 | Evaluatie-enquête voor gebruikers maken |  | 1d? | 2017-06-05 16:10 | 2017-06-06 16:10 |  | 0d |  |
| 122 | 5.4.2 | Ingevulde enquêtes met gebruikers bespreken |  | 1d? | 2017-06-06 16:10 | 2017-06-07 16:10 | 121 | 0d |  |
| 123 | 5.4.3 | Verslag van de gebruikersenquête, aangevuld met zelfevaluatie |  | 1d? | 2017-06-07 16:10 | 2017-06-08 16:10 | 122 | 0d |  |
| 124 | 6 | Eind KT3 | milestone | 0d | 2009-10-12 08:00 | 2009-10-12 08:00 |  | 1998.94d |  |
